# CiC Acceleration Jul-Dec 2026

Schedule from GanttProject, 2026-07-16 to 2027-01-15.
Church in Conversation
Master schedule from CiC_Acceleration_Plan_Jul-Dec_2026_V0_1_DRAFT (Ministry/Funding). / Milestones marked with GATE are the funding/launch gates. Keep in sync with Ministry/Operations/CiC_Task_Board_2026.md. / Update rule: mark tasks complete here (percent), then refresh the task board's DO NOW list from whatever has all predecessors done. / 2026-07-22: tasks 439-452 (the TR-* Hosted Tour feature) deferred to Phase 2+ per Mark's direct descope / decision -- not in the current build cycle. Done tasks (439, 441, 442) kept complete=100, renamed / [DONE - shelved, Phase 2] rather than deleted. Not-yet-started tasks (440, 443-452) renamed [DEFERRED - / Phase 2] and pushed to placeholder date 2027-01-04 (out of the Jul-Dec 2026 window). See Task Board's / Phase 2+/DEFERRED section and the System Hub Decision Log, 2026-07-22, for full reasoning. / 2026-08-01: task 603's Entity ID/Transaction # and date were wrong (carried the 2026-07-21 filing / attempt that never actually completed) -- corrected to the real filing, Entity ID 20261918758, / 2026-07-27. See the System Hub Decision Log, 2026-07-27. / 2026-08-01: tasks 424-427 (RM-7..RM-10, Representative Modes' 4-lane rollout) renamed [PAUSED] -- / Mark's direct scope call, 2026-07-24/25: general voice ships instead, no role selection, until real / pilot feedback from professors/academics specifically reopens it. Not renumbered/rescheduled since / the pause is a hold, not a cancellation -- re-baseline dates once the trigger fires. See Task Board / (DO NOW, the DECIDED 2026-07-24/25 entry) and the System Hub Decision Log, 2026-07-24 (later / entries).

## Calendars

- Project calendar: Mon-Fri working; Sat-Sun off.

## Schedule

| ID | WBS | Task | Type | Duration | Start | Finish | Predecessors | Complete |
| --- | --- | --- | --- | --- | --- | --- | --- | --- |
| 1 | 1 | **A - PROTOTYPES AND USERS** |  | 111d | 2026-07-17 | 2026-12-18 |  |  |
| 2 | 1.1 | Direct-API hosting (Render) - LIVE 2026-07-23, Atlas + cic-poc both up, verified end-to-end |  | 5d | 2026-07-20 | 2026-07-24 |  | 100% |
| 3 | 1.2 | Prototype 1 runs (15-25 testers, both modes) |  | 11d | 2026-07-30 | 2026-08-13 | 2 |  |
| 4 | 1.3 | P1 analysis: actuals, tester quotes, one story |  | 3d | 2026-08-11 | 2026-08-13 | 3 |  |
| 5 | 1.4 | P2 cohort (~100 users) |  | 34d | 2026-09-15 | 2026-10-30 | 4, 41 |  |
| 6 | 1.5 | Early Access ramp 300 to 500 users |  | 34d | 2026-11-03 | 2026-12-18 | 5, 43 |  |
| 7 | 1.6 | GATE: Lane A confirmed - 500 users | milestone | 0d | 2026-12-18 | 2026-12-18 | 6 |  |
| 8 | 2 | **B - WORLD BUILDING** |  | 100d | 2026-08-03 | 2026-12-18 |  |  |
| 9 | 2.1 | Guided starter question sets (4 live worlds) |  | 9d | 2026-08-03 | 2026-08-13 |  | 75% |
| 10 | 2.2 | Ancient world 5: build + battery + deploy gates |  | 6d | 2026-08-03 | 2026-08-10 |  |  |
| 11 | 2.3 | Ancient world 6: build + battery + deploy gates |  | 6d | 2026-08-11 | 2026-08-18 | 10 |  |
| 12 | 2.4 | Ancient world 7: build + battery + deploy gates |  | 6d | 2026-08-19 | 2026-08-26 | 11 |  |
| 13 | 2.5 | Ancient world 8: build + battery + deploy gates |  | 6d | 2026-08-27 | 2026-09-03 | 12 |  |
| 14 | 2.6 | Ancient world 9: build + battery + deploy gates |  | 6d | 2026-09-04 | 2026-09-11 | 13 |  |
| 15 | 2.7 | MILESTONE: 9 ancient worlds complete | milestone | 0d | 2026-09-11 | 2026-09-11 | 14 |  |
| 16 | 2.8 | Reformation selection + Living Tradition confirmations |  | 8d | 2026-09-14 | 2026-09-23 | 14 |  |
| 17 | 2.9 | Reformation world 1: build + battery + LT gate |  | 6d | 2026-09-24 | 2026-10-01 | 16 |  |
| 18 | 2.10 | Reformation world 2: build + battery + LT gate |  | 6d | 2026-10-02 | 2026-10-09 | 17 |  |
| 19 | 2.11 | Reformation world 3: build + battery + LT gate |  | 6d | 2026-10-12 | 2026-10-19 | 18 |  |
| 20 | 2.12 | Reformation world 4: build + battery + LT gate |  | 6d | 2026-10-20 | 2026-10-27 | 19 |  |
| 21 | 2.13 | Reformation world 5: build + battery + LT gate |  | 6d | 2026-10-28 | 2026-11-04 | 20 |  |
| 22 | 2.14 | Reformation world 6: build + battery + LT gate |  | 6d | 2026-11-05 | 2026-11-12 | 21 |  |
| 23 | 2.15 | Reformation world 7: build + battery + LT gate |  | 6d | 2026-11-13 | 2026-11-20 | 22 |  |
| 24 | 2.16 | MILESTONE: all 16 worlds built (stretch 8-10 only if ahead) | milestone | 0d | 2026-11-20 | 2026-11-20 | 23 |  |
| 25 | 2.17 | Build freeze + final upgrade pass |  | 4d | 2026-12-01 | 2026-12-04 | 24 |  |
| 26 | 2.18 | Weekly quality-upgrade batches (ongoing) |  | 99d | 2026-08-03 | 2026-12-17 |  |  |

| ID | WBS | Task | Type | Duration | Start | Finish | Predecessors | Complete |
| --- | --- | --- | --- | --- | --- | --- | --- | --- |
| 27 | 3 | **C - VALIDATION (Article 31)** |  | 109d | 2026-07-17 | 2026-12-16 |  |  |
| 28 | 3.1 | Reviewer brief (one page) - MOST TIME-CRITICAL |  | 2d | 2026-07-17 | 2026-07-20 |  | 75% |
| 29 | 3.2 | TEDS professor outreach to signed engagement |  | 25d | 2026-07-21 | 2026-08-24 | 28 |  |
| 30 | 3.3 | Second reviewer outreach (Fairbairn or Laing) |  | 12d | 2026-08-17 | 2026-09-01 | 28 |  |
| 31 | 3.4 | GATE: two reviewers engaged (Sept 1) | milestone | 0d | 2026-09-02 | 2026-09-02 | 29, 30 |  |
| 32 | 3.5 | Round 1 holistic review (9 ancient worlds) |  | 34d | 2026-09-07 | 2026-10-22 | 31 |  |
| 33 | 3.6 | Reformation-era reviewer engaged (by Oct 15) |  | 11d | 2026-10-01 | 2026-10-15 | 28 |  |
| 34 | 3.7 | Round 1 revisions applied |  | 10d | 2026-10-26 | 2026-11-06 | 32 |  |
| 35 | 3.8 | Round 2 review (Reformation + methodology ext.) |  | 25d | 2026-11-09 | 2026-12-11 | 21, 33 |  |
| 36 | 3.9 | Launch honesty language finalized |  | 3d | 2026-12-14 | 2026-12-16 | 35 |  |
| 37 | 4 | **D - PLATFORM AND ENGINEERING** |  | 108d | 2026-07-17 | 2026-12-15 |  |  |
| 38 | 4.1 | Session caps + Render deploy verified live (message_cap.py, cic-poc.onrender.com) |  | 2d | 2026-07-20 | 2026-07-21 |  | 100% |
| 39 | 4.2 | Fix + test transcript-logging gap (frame-breaker/relational-safety turns not captured) |  | 2d | 2026-07-18 | 2026-07-21 |  |  |
| 40 | 4.3 | Increment 1: Front-end budget compliance (citation inline migration + table-bar consolidation) |  | 5d | 2026-08-17 | 2026-08-21 |  |  |
| 41 | 4.4 | Increment 3: Post-table question serving (role-served walks, Curriculum V1.0 JSON) - shipped in UI |  | 5d | 2026-08-26 | 2026-09-01 | 9, 51 |  |
| 42 | 4.5 | Increment 4: World Map Tier A merge (front-end thread; never before/during Prototype 1) |  | 5d | 2026-09-02 | 2026-09-08 | 41 |  |
| 43 | 4.6 | Engagement One: 500-user infra + Tier-1 caching |  | 20d | 2026-09-21 | 2026-10-16 | 4, 74 |  |
| 44 | 4.7 | Engagement Two: pre-public audit |  | 18d | 2026-11-16 | 2026-12-09 | 43, 76 |  |
| 45 | 4.8 | Audit mechanism (invisible register) + minor-caution mechanism |  | 29d | 2026-11-02 | 2026-12-10 | 43 |  |
| 46 | 4.9 | GATE: Lane B public flip go/no-go | milestone | 0d | 2026-12-15 | 2026-12-15 | 36, 44, 45 |  |
| 47 | 4.10 | Representative Modes: design, prompt architecture, exploration branch build, verification, validation plan, integration assessment (RM-1..RM-6) |  | 1d | 2026-07-16 | 2026-07-16 |  | 100% |
| 48 | 4.11 | [PAUSED - see 2026-07-24/25] RM-7: Mark reviews Design Spec S6 demonstration artifact |  | 1d | 2026-07-18 | 2026-07-20 |  |  |
| 49 | 4.12 | [PAUSED - see 2026-07-24/25] RM-8: Validation run - Battery A - RAN 2026-07-22, FAILED, fixed same day + spot-verified; formal re-run still owed |  | 2d | 2026-07-21 | 2026-07-22 | 48 | 70% |
| 50 | 4.13 | [PAUSED - see 2026-07-24/25] RM-9: Validation run - Batteries B-D (drift, overclaiming, adversarial) |  | 3d | 2026-07-23 | 2026-07-27 | 49 |  |
| 51 | 4.14 | [PAUSED - see 2026-07-24/25] RM-10 / Increment 2: Role selection UI + Representative Modes merge decision (front-end thread; never before/during Prototype 1; blocked on the 4-lane pause's re-entry trigger -- real pilot feedback from professors/academics -- not just Battery A) |  | 2d | 2026-08-24 | 2026-08-25 | 40, 49 |  |
| 52 | 4.15 | [PAUSED - see 2026-07-24/25] RM-11: Onboarding copy - mention role selection |  | 1d | 2026-08-26 | 2026-08-26 | 51 |  |
| 53 | 4.16 | [PAUSED - see 2026-07-24/25] RM-12: role=/worlds=/mode= URL parse-site reconciliation (waits on whichever of Representative Modes or World Map merges second) |  | 1d | 2026-09-08 | 2026-09-08 | 42, 51 |  |
| 54 | 4.17 | RM-13: Tier B - role-default transparency mode (blocked on Mode One/Two toggle) |  | 1d | 2026-09-01 | 2026-09-01 |  |  |
| 55 | 4.18 | RM-14: Tier C - closing-resources register by role (blocked on closing resources) |  | 1d | 2026-09-01 | 2026-09-01 |  |  |
| 56 | 4.19 | RM-15: Tier D - role-aware safety classifiers (deliberately not designed, not scoped) |  | 1d | 2026-09-01 | 2026-09-01 |  |  |
| 57 | 4.20 | [DONE - shelved, Phase 2] TR-1..TR-3: Tour strategy, evidentiary analysis, Chloe demo build + recordings, decision log |  | 1d | 2026-07-16 | 2026-07-16 |  | 100% |
| 58 | 4.21 | [DEFERRED - Phase 2] TR-confirm: Mark confirms voice-only interpretation + evidentiary-absence commitment |  | 1d | 2027-01-04 | 2027-01-04 |  |  |
| 59 | 4.22 | [DONE - shelved, Phase 2] TR-4: L4 Tour Manifest Template + review-cycle definition |  | 2d | 2026-07-18 | 2026-07-21 |  | 100% |
| 60 | 4.23 | [DONE - shelved, Phase 2] TR-5: Tour Eligibility Gate as a repeatable per-world checklist |  | 2d | 2026-07-18 | 2026-07-21 |  | 100% |
| 61 | 4.24 | [DEFERRED - Phase 2] TR-6: Asset-sourcing sub-pipeline (documented + tooled) |  | 3d | 2027-01-04 | 2027-01-06 |  |  |
| 62 | 4.25 | [DEFERRED - Phase 2] TR-8: Recording pipeline confirmed reusable per world |  | 1d | 2027-01-04 | 2027-01-04 |  |  |
| 63 | 4.26 | [DEFERRED - Phase 2] TR-7: Templated tour renderer (world supplies manifest + assets) |  | 3d | 2027-01-04 | 2027-01-06 | 59 |  |
| 64 | 4.27 | [DEFERRED - Phase 2] TR-9: Scene-narration validation probe category (validation-suite thread) |  | 2d | 2027-01-04 | 2027-01-05 | 59 |  |
| 65 | 4.28 | [DEFERRED - Phase 2] TR-10: House-Churches/Chloe - formalize demo into reviewed Tour Manifest |  | 3d | 2027-01-04 | 2027-01-06 | 58, 59 |  |
| 66 | 4.29 | [DEFERRED - Phase 2] TR-11: Syriac/Mar Yausep - manifest for syrstory009 (needs pronunciation pass) |  | 4d | 2027-01-04 | 2027-01-07 | 61 |  |
| 67 | 4.30 | [DEFERRED - Phase 2] TR-12: Desert/Papnoute - manifest for desertstory008 (no worship-service tour) |  | 3d | 2027-01-04 | 2027-01-06 | 59, 66 |  |
| 68 | 4.31 | [DEFERRED - Phase 2] TR-13: Bethlehem Circle/Albina - manifest for hal_story10 (produce last, no liturgical tour) |  | 3d | 2027-01-04 | 2027-01-06 | 59, 67 |  |
| 69 | 4.32 | [DEFERRED - Phase 2] TR-14: cic-poc integration (tour_manifest.py, mode-overlay, invitation card, tour view) - behind Increment 1 + role selection; never before/during P1 |  | 10d | 2027-01-04 | 2027-01-15 | 40, 51 |  |
| 70 | 4.33 | [DEFERRED - Phase 2] TR-15: World Map 'Take a tour' handoff (needs TR-7, TR-14, and the map itself merged; distinct from the World Map's own already-shipped 'Watch the flow' walkthrough, which is unaffected) |  | 3d | 2027-01-04 | 2027-01-06 | 42, 63, 69 |  |

| ID | WBS | Task | Type | Duration | Start | Finish | Predecessors | Complete |
| --- | --- | --- | --- | --- | --- | --- | --- | --- |
| 71 | 5 | **E - FUNDING** |  | 120d | 2026-07-17 | 2026-12-31 |  |  |
| 72 | 5.1 | Church-designated fund agreed (pastor conversation) |  | 5d | 2026-07-17 | 2026-07-23 |  |  |
| 73 | 5.2 | Ring 1 ask: refreshed Letter to 15-20 names |  | 12d | 2026-08-17 | 2026-09-01 | 4, 72, 102 |  |
| 74 | 5.3 | GATE: $7,500 raised (Sept 1) | milestone | 0d | 2026-09-02 | 2026-09-02 | 73 |  |
| 75 | 5.4 | World sponsorship asks ($3,500 x 3-5 churches) |  | 40d | 2026-09-07 | 2026-10-30 | 101, 103 |  |
| 76 | 5.5 | GATE: ~$25,000 cumulative (Nov 1) | milestone | 0d | 2026-11-02 | 2026-11-02 | 75 |  |
| 77 | 5.6 | Paying pilots: 3-5 churches/classrooms (fork-decider) |  | 35d | 2026-10-05 | 2026-11-20 | 101 |  |
| 78 | 5.7 | NCF / DAF year-end asks |  | 20d | 2026-11-16 | 2026-12-11 |  |  |
| 79 | 5.8 | Public year-end appeal (post-CCSA) |  | 22d | 2026-12-01 | 2026-12-30 | 94 |  |
| 80 | 6 | **F - FAITHWAYS STUDIO PBC FORMATION (pivoted from nonprofit, 2026-07-21)** |  | 118d | 2026-07-17 | 2026-12-29 |  |  |
| 81 | 6.1 | Praxis interest form (5 minutes) |  | 1d | 2026-07-17 | 2026-07-17 |  |  |
| 82 | 6.2 | Entity prep: Faithways Studio PBC — Articles, Bylaws, IP Assignment, Shareholder Agreement (drafted + 3 independent review rounds) |  | 25d | 2026-08-03 | 2026-09-04 |  | 95% |
| 83 | 6.3 | DONE — Filed CO Articles of Incorporation (Faithways Studio, Inc., PBC). CORRECTED 2026-08-01: real filing is 2026-07-27, Entity ID 20261918758 -- the 2026-07-21 date below never actually completed (on-screen only, no receipt), refiled from scratch. Chart date kept at 07-21 so 624/625/621 below don't appear to predate their predecessor; the real sequencing question this raises (those 3 were signed 07-21, before the entity legally existed) is flagged to Mark/Susan, not resolved here -- see Decision Log 2026-07-27 |  | 1d | 2026-07-21 | 2026-07-21 | 82 | 100% |
| 84 | 6.4 | DONE — EIN obtained from the IRS |  | 1d | 2026-07-21 | 2026-07-21 | 83 | 100% |
| 85 | 6.5 | DONE — Organizational Resolutions executed (Bylaws adopted, officers elected, share issuance + bank account authorized) |  | 1d | 2026-07-21 | 2026-07-21 | 84 | 100% |
| 86 | 6.6 | Open corporate bank account + fund $40 founder capital ($20 each) |  | 3d | 2026-07-25 | 2026-07-29 | 85 |  |
| 87 | 6.7 | DONE — IP Assignment Agreement and Shareholder Buy-Sell Agreement executed, copies given to Susan |  | 1d | 2026-07-21 | 2026-07-21 | 86 | 100% |
| 88 | 6.8 | Issue Notice of Uncertificated Shares to Mark and Susan (C.R.S. § 7-106-207 / § 7-101-505) |  | 1d | 2026-07-30 | 2026-07-30 | 87 |  |
| 89 | 6.9 | File 'Church in Conversation' Colorado trade name (DBA) |  | 1d | 2026-07-23 | 2026-07-23 | 83 |  |
| 90 | 6.10 | [SUPERSEDED — nonprofit path, not applicable to PBC] 1023-EZ filed |  | 8d | 2026-09-21 | 2026-09-30 |  |  |
| 91 | 6.11 | [SUPERSEDED — nonprofit path, not applicable to PBC] IRS determination (typical wait) |  | 40d | 2026-10-01 | 2026-11-25 | 90 |  |
| 92 | 6.12 | [SUPERSEDED — nonprofit path, not applicable to PBC] TechSoup / AWS nonprofit credits applications |  | 8d | 2026-11-30 | 2026-12-09 | 91 |  |
| 93 | 6.13 | [SUPERSEDED — nonprofit path, not applicable to PBC] Board recruitment: 3 clean independents (+ <=1 family) |  | 60d | 2026-08-17 | 2026-11-06 |  |  |
| 94 | 6.14 | [SUPERSEDED — nonprofit path, not applicable to PBC] CCSA charitable solicitation registration |  | 20d | 2026-10-19 | 2026-11-13 |  |  |
| 95 | 6.15 | [SUPERSEDED — covered by #620 above] Bank account + bookkeeping setup |  | 8d | 2026-10-05 | 2026-10-14 |  |  |
| 96 | 6.16 | [SUPERSEDED — nonprofit path, not applicable to PBC] D and O insurance quote + bind |  | 8d | 2026-11-09 | 2026-11-18 | 93 |  |
| 97 | 6.17 | [SUPERSEDED — nonprofit path, not applicable to PBC] First board meeting: bylaws, covenant, conflict + compensation policy, 2027 budget |  | 3d | 2026-11-16 | 2026-11-18 | 93 |  |
| 98 | 6.18 | [SUPERSEDED — nonprofit path, not applicable to PBC] MILESTONE: stipend trigger policy adopted | milestone | 0d | 2026-11-19 | 2026-11-19 | 97 |  |
| 99 | 6.19 | [SUPERSEDED — nonprofit path, not applicable to PBC] GATE: nonprofit fully established (board, policies, CCSA) | milestone | 0d | 2026-12-01 | 2026-12-01 | 94, 97 |  |

| ID | WBS | Task | Duration | Start | Finish | Predecessors |
| --- | --- | --- | --- | --- | --- | --- |
| 100 | 7 | **G - MINISTRY GROWTH AND COMMUNICATION** | 103d | 2026-08-11 | 2026-12-31 |  |
| 101 | 7.1 | Packet V0.2 = presentable business plan (P1 actuals in) | 8d | 2026-08-11 | 2026-08-20 | 4 |
| 102 | 7.2 | Letter to Friends + FAQ refresh (4-world reality, counts fixed) | 4d | 2026-08-11 | 2026-08-14 | 4 |
| 103 | 7.3 | Demo polish: 20-minute guided Table | 8d | 2026-09-01 | 2026-09-10 | 4 |
| 104 | 7.4 | Landing page + interest list live | 8d | 2026-08-24 | 2026-09-02 | 102 |
| 105 | 7.5 | Acadia Divinity peer call (Maxwell / Robbins) | 5d | 2026-08-17 | 2026-08-21 |  |
| 106 | 7.6 | Wheaton conversation (anchor cultivation + Wabash one-pager) | 20d | 2026-10-05 | 2026-10-30 | 101, 103 |
| 107 | 7.7 | Tom Beck: demonstration-first note + 30 minutes | 10d | 2026-10-12 | 2026-10-23 | 101, 103 |
| 108 | 7.8 | Lilly-wave positioning with anchor partner | 14d | 2026-12-01 | 2026-12-18 | 32, 106 |
| 109 | 7.9 | Praxis application prep (April 2027 window) | 12d | 2026-12-14 | 2026-12-29 |  |
